# OzBuild.mpp

Schedule from MS Project, 2024-12-09 to 2025-01-27.
Wilson International
OzBuild

## Calendars

- Standard: Mon-Fri 08:00-12:00, 13:00-17:00; Sat-Sun off. Exceptions (off unless hours are given): 2024-01-01 to 2033-01-01 (New Years Day, recurring), 2024-12-25 to 2033-12-25 (Christmas, recurring), 2024-12-26 to 2033-12-26 (Boxing Day, recurring), 2025-01-11 (Working Saturday).
- 6 Day Week: Mon-Sat 08:00-12:00, 13:00-17:00; Sun off. Exceptions (off unless hours are given): 2024-01-01 to 2033-01-01 (New Years Day, recurring), 2024-12-25 to 2033-12-25 (Christmas, recurring), 2024-12-26 to 2033-12-26 (Boxing Day, recurring).

## Schedule

| ID | WBS | Task | Type | Duration | Start | Finish | Predecessors | Total slack | Free slack | Constraint | Calendar |
| --- | --- | --- | --- | --- | --- | --- | --- | --- | --- | --- | --- |
| 1 | 1 | **Bid for Facility Extension** |  | 33d | 2024-12-09 | 2025-01-27 |  | 0d |  |  |  |
| 2 | 1.1 | **Technical Specification** |  | 13d | 2024-12-09 | 2024-12-27 |  | 4d |  |  |  |
| 3 | 1.1.1 | Approval to Bid | milestone | 0d | 2024-12-09 | 2024-12-09 |  | 4d | 0d |  |  |
| 4 | 1.1.2 | Determine Installation Requirements |  | 4d | 2024-12-09 | 2024-12-12 | 3 | 4d | 0d |  |  |
| 5 | 1.1.3 | Create Technical Specification |  | 5d | 2024-12-13 | 2024-12-19 | 4 | 4d | 0d |  |  |
| 6 | 1.1.4 | Identify Supplier Components |  | 2d | 2024-12-20 | 2024-12-23 | 5 | 4d | 0d |  |  |
| 7 | 1.1.5 | Validate Technical Specification |  | 2d | 2024-12-24 | 2024-12-27 | 6 | 6d | 0d |  |  |
| 8 | 1.2 | **Delivery Plan** |  | 16d | 2024-12-30 | 2025-01-21 |  | 0d |  |  |  |
| 9 | 1.2.1 | Document Delivery Methodology |  | 4d | 2024-12-30 | 2025-01-03 | 7 | 6d | 0d |  |  |
| 10 | 1.2.2 | Obtain Quotes from Suppliers |  | 8d | 2025-01-02 | 2025-01-13 | 6 | 0d |  | start no earlier than 2025-01-02 |  |
| 11 | 1.2.3 | Calculate the Bid Estimate |  | 3d | 2025-01-14 | 2025-01-16 | 9, 10 | 0d |  |  | 6 Day Week |
| 12 | 1.2.4 | Create the Project Schedule |  | 3d | 2025-01-17 | 2025-01-20 | 11 | 0d |  |  | 6 Day Week |
| 13 | 1.2.5 | Review the Delivery Plan |  | 1d | 2025-01-21 | 2025-01-21 | 12 | 0d |  |  |  |
| 14 | 1.3 | **Bid Document** |  | 16d | 2025-01-06 | 2025-01-27 |  | 0d |  |  |  |
| 15 | 1.3.1 | Create Draft of Bid Document |  | 6d | 2025-01-06 | 2025-01-13 | 9 | 6d |  |  |  |
| 16 | 1.3.2 | Review Bid Document |  | 2d | 2025-01-22 | 2025-01-23 | 13, 15 | 0d |  |  |  |
| 17 | 1.3.3 | Finalize and Submit Bid Document |  | 2d | 2025-01-24 | 2025-01-27 | 16 | 0d |  |  |  |
| 18 | 1.3.4 | Bid Document Submitted | milestone | 0d | 2025-01-27 | 2025-01-27 | 17 | 0d |  | finish no later than 2025-01-27 |  |

Notes:
- 3: Status Check (ignore Summary Task comments): Incomplete task in past, move Start to future or assign progress. Move Finish to future.
- 4: Status Check (ignore Summary Task comments): Incomplete task in past, move Start to future or assign progress. Move Finish to future.
- 5: Status Check (ignore Summary Task comments): Incomplete task in past, move Start to future or assign progress. Move Finish to future.
- 6: Status Check (ignore Summary Task comments): Incomplete task in past, move Start to future or assign progress. Move Finish to future.
- 7: Status Check (ignore Summary Task comments): Incomplete task in past, move Start to future or assign progress. Move Finish to future.
- 9: Status Check (ignore Summary Task comments): Incomplete task in past, move Start to future or assign progress. Move Finish to future.
- 10: Status Check (ignore Summary Task comments): Incomplete task in past, move Start to future or assign progress. Move Finish to future.
- 11: Status Check (ignore Summary Task comments): Incomplete task in past, move Start to future or assign progress. Move Finish to future.
- 12: Status Check (ignore Summary Task comments): Incomplete task in past, move Start to future or assign progress. Move Finish to future.
- 13: Status Check (ignore Summary Task comments): Incomplete task in past, move Start to future or assign progress. Move Finish to future.
- 15: Status Check (ignore Summary Task comments): Incomplete task in past, move Start to future or assign progress. Move Finish to future.
- 16: Status Check (ignore Summary Task comments): Incomplete task in past, move Start to future or assign progress. Move Finish to future.
- 17: Status Check (ignore Summary Task comments): Incomplete task in past, move Start to future or assign progress. Move Finish to future.
- 18: Status Check (ignore Summary Task comments): Incomplete task in past, move Start to future or assign progress. Move Finish to future.
