# OzBuild.mpp

Schedule from MS Project, 2024-12-09 to 2025-01-27, status date 2024-12-13, costs in $, A marks actual dates.
Wilson International
OzBuild

## Calendars

- Standard: Mon-Fri 08:00-12:00, 13:00-17:00; Sat-Sun off. Exceptions (off unless hours are given): 2024-01-01 to 2033-01-01 (New Years Day, recurring), 2024-12-25 to 2033-12-25 (Christmas, recurring), 2024-12-26 to 2033-12-26 (Boxing Day, recurring), 2025-01-11 (Working Saturday).
- 6 Day Week: Mon-Sat 08:00-12:00, 13:00-17:00; Sun off. Exceptions (off unless hours are given): 2024-01-01 to 2033-01-01 (New Years Day, recurring), 2024-12-25 to 2033-12-25 (Christmas, recurring), 2024-12-26 to 2033-12-26 (Boxing Day, recurring).

## Resources

| Resource | Group | Unit | Rate |
| --- | --- | --- | --- |
| Project Manager | Office |  | 120 |
| Systems Engineer | Office |  | 90 |
| Project Support | Site |  | 80 |
| Purchasing Officer | Office |  | 70 |
| Clerical Support | Office |  | 50 |
| Specialist Consultant | Contractor |  |  |
| Report Binding | Material | Each | 100 |

## Schedule

| ID | WBS | Task | Type | Duration | Start | Finish | Predecessors | Complete | Remaining | Baseline start | Baseline finish | Baseline duration | Total slack | Free slack | Constraint | Calendar | Resources | Work | Actual work | Cost | Baseline cost | Actual cost | Responsibility |
| --- | --- | --- | --- | --- | --- | --- | --- | --- | --- | --- | --- | --- | --- | --- | --- | --- | --- | --- | --- | --- | --- | --- | --- |
| 1 | 1 | **Bid for Facility Extension** |  | 33d | 2024-12-09 A | 2025-01-27 |  | 13% | 28.6d | 2024-12-09 | 2025-01-27 | 33d | 0d |  |  |  |  | 536h | 72h | 56,260 | 55,060 | 7,200 |  |
| 2 | 1.1 | **Technical Specification** |  | 15d | 2024-12-09 A | 2024-12-31 |  | 38% | 9.38d | 2024-12-09 | 2024-12-27 | 13d | 4d |  |  |  |  | 168h | 72h | 21,000 | 19,800 | 7,200 |  |
| 3 | 1.1.1 | Approval to Bid | milestone | 0d | 2024-12-09 A | 2024-12-09 A |  | 100% |  | 2024-12-09 | 2024-12-09 | 0d |  |  |  |  |  |  |  |  |  |  |  |
| 4 | 1.1.2 | Determine Installation Requirements |  | 3d | 2024-12-09 A | 2024-12-11 A | 3 | 100% |  | 2024-12-09 | 2024-12-12 | 4d |  |  |  |  | Project Manager; Systems Engineer | 48h | 48h | 5,040 | 6,720 | 5,040 | Scott Morrison - Engineering |
| 5 | 1.1.3 | Create Technical Specification |  | 9d | 2024-12-11 A | 2024-12-23 | 4 | 33% | 6d | 2024-12-13 | 2024-12-19 | 5d | 2d | 0d |  |  | Systems Engineer; Specialist Consultant [0.1%] | 72h | 24h | 11,480 | 8,600 | 2,160 | Scott Morrison - Engineering |
| 6 | 1.1.4 | Identify Supplier Components |  | 2d | 2024-12-24 | 2024-12-27 | 5 |  |  | 2024-12-20 | 2024-12-23 | 2d | 2d | 0d |  |  | Purchasing Officer | 16h |  | 1,120 | 1,120 |  | Angela Lowe - Purchasing |
| 7 | 1.1.5 | Validate Technical Specification |  | 2d | 2024-12-30 | 2024-12-31 | 6 |  |  | 2024-12-24 | 2024-12-27 | 2d | 4d | 0d |  |  | Project Manager; Systems Engineer | 32h |  | 3,360 | 3,360 |  | Scott Morrison - Engineering |
| 8 | 1.2 | **Delivery Plan** |  | 14d | 2025-01-02 | 2025-01-21 |  |  |  | 2024-12-30 | 2025-01-21 | 16d | 0d |  |  |  |  | 224h |  | 21,520 | 21,520 |  |  |
| 9 | 1.2.1 | Document Delivery Methodology |  | 4d | 2025-01-02 | 2025-01-07 | 7 |  |  | 2024-12-30 | 2025-01-03 | 4d | 4d | 0d |  |  | Project Manager | 32h |  | 3,840 | 3,840 |  | Scott Morrison - Engineering |
| 10 | 1.2.2 | Obtain Quotes from Suppliers |  | 8d | 2025-01-02 | 2025-01-13 | 6 |  |  | 2025-01-02 | 2025-01-13 | 8d | 0d |  | start no earlier than 2025-01-02 |  | Purchasing Officer; Project Manager | 128h |  | 12,160 | 12,160 |  | Angela Lowe - Purchasing |
| 11 | 1.2.3 | Calculate the Bid Estimate |  | 3d | 2025-01-14 | 2025-01-16 | 9, 10 |  |  | 2025-01-14 | 2025-01-16 | 3d | 0d |  |  | 6 Day Week | Project Support | 24h |  | 1,920 | 1,920 |  | Carol Peterson - Bid Manager |
| 12 | 1.2.4 | Create the Project Schedule |  | 3d | 2025-01-17 | 2025-01-20 | 11 |  |  | 2025-01-17 | 2025-01-20 | 3d | 0d |  |  | 6 Day Week | Project Support | 24h |  | 1,920 | 1,920 |  | Carol Peterson - Bid Manager |
| 13 | 1.2.5 | Review the Delivery Plan |  | 1d | 2025-01-21 | 2025-01-21 | 12 |  |  | 2025-01-21 | 2025-01-21 | 1d | 0d |  |  |  | Project Manager; Systems Engineer | 16h |  | 1,680 | 1,680 |  | Carol Peterson - Bid Manager |
| 14 | 1.3 | **Bid Document** |  | 14d | 2025-01-08 | 2025-01-27 |  |  |  | 2025-01-06 | 2025-01-27 | 16d | 0d |  |  |  |  | 144h |  | 13,740 | 13,740 |  |  |
| 15 | 1.3.1 | Create Draft of Bid Document |  | 6d | 2025-01-08 | 2025-01-15 | 9 |  |  | 2025-01-06 | 2025-01-13 | 6d | 4d |  |  |  | Clerical Support; Project Manager | 96h |  | 8,160 | 8,160 |  | Carol Peterson - Bid Manager |
| 16 | 1.3.2 | Review Bid Document |  | 2d | 2025-01-22 | 2025-01-23 | 13, 15 |  |  | 2025-01-22 | 2025-01-23 | 2d | 0d |  |  |  | Systems Engineer; Project Manager | 32h |  | 3,360 | 3,360 |  | Carol Peterson - Bid Manager |
| 17 | 1.3.3 | Finalize and Submit Bid Document |  | 2d | 2025-01-24 | 2025-01-27 | 16 |  |  | 2025-01-24 | 2025-01-27 | 2d | 0d |  |  |  | Project Manager; Report Binding [3 Each] | 16h |  | 2,220 | 2,220 |  | Carol Peterson - Bid Manager |
| 18 | 1.3.4 | Bid Document Submitted | milestone | 0d | 2025-01-27 | 2025-01-27 | 17 |  |  | 2025-01-27 | 2025-01-27 | 0d | 0d |  | finish no later than 2025-01-27 |  |  |  |  |  |  |  |  |
